# OE_VPC5.3.0_PP_项目进度计划V1.3

Schedule from MS Project, 2021-02-26 to 2032-07-30, A marks actual dates.

## Calendars

- v.4.1: Mon-Fri 08:00-12:00, 13:00-17:00; Sat-Sun off. Exceptions (off unless hours are given): 2021-04-03 to 2021-04-05 (清明节), 2021-04-10 08:00-12:00, 13:00-17:00 (工作日), 2021-04-17 08:00-12:00, 13:00-17:00 (工作日), 2021-04-24 08:00-12:00, 13:00-17:00 (工作日), 2021-05-01 to 2021-05-05 (五一), 2021-05-08 08:00-12:00, 13:00-17:00 (工作日).

## Resources

| Resource |
| --- |
| 袁阳 |
| 王梦雄 |
| 邹宇会 |
| 张垚 |
| 阮泽林 |
| 章传胜 |
| 魏洪 |
| 杨燕思 |
| 贾志浩 |
| 胡海 |
| 羿中引 |
| 周天文 |
| 陈小虎 |
| 王川 |
| 田怡文 |
| 黄子杰 |
| 余维伟 |
| 童春月 |
| 万红 |
| 魏聪 |
| 周宇会 |
| 朱晓坤 |
| 朱晓琨 |
| 周姚 |
| ALL |
| 朱盼 |
| 戴琪冉 |
| 刘海军 |
| 程浩 |
| 孙俊 |
| 艾象葵 |
| 朱晓锟 |
| 金昊翔 |
| 朱晓 |
| 小虎 |

## Schedule

| ID | WBS | Task | Type | Duration | Start | Finish | Predecessors | Remaining | Baseline 1 start | Baseline 1 finish | Total slack | Free slack | Constraint | Resources | Work | Actual work | 延期 | 备注时间变动 |
| --- | --- | --- | --- | --- | --- | --- | --- | --- | --- | --- | --- | --- | --- | --- | --- | --- | --- | --- |
| 1 | 1 | **VPC需求细化：输出 需求文档、原型、流程图** |  | 2980d? | 2021-02-26 08:30 A | 2032-07-30 08:30 |  | 2980d? | 2009-11-16 09:00 | 2021-04-22 09:00 |  |  |  |  | 423h | 8h |  |  |
| 2 | 1.1 | **UOS开发任务** |  | 55d? | 2021-02-26 08:30 | 2021-05-14 08:30 |  |  |  |  |  |  |  |  | 263h |  |  |  |
| 3 | 1.1.1 | **4.3.0 VDI功能迁移至VPC** |  | 1d? | 2021-02-26 08:30 | 2021-03-01 08:30 |  |  |  |  |  |  |  |  | 8h |  |  |  |
| 4 | 1.1.1.1 | [6890]漏扫低风险点完善 | manual | 1d | 2021-03-18 08:30 | 2021-03-18 17:30 |  |  |  |  |  |  |  | 田怡文 | 8h |  | -4294923021.27 |  |
| 5 | 1.1.2 | **[6829]批量解关联用户** |  | 0.5d? | 2021-02-26 08:30 | 2021-02-26 13:30 |  |  | 2021-02-25 09:00 | 2021-02-25 09:00 |  |  |  |  | 4h |  | 25.33 |  |
| 6 | 1.1.2.1 | 批量解关联用户 |  | 0.5d | 2021-04-01 13:30 | 2021-04-02 08:30 |  |  |  |  | 2955d |  | start no earlier than 2021-04-01 13:30 | 黄子杰 | 4h |  | -4294923006.65 | 后端接口有问题，多次联调，一共花了1天时间，占用了其他时间 |
| 7 | 1.1.3 | **[6830]唤醒服务器** |  | 2d? | 2021-02-26 08:30 | 2021-03-02 08:30 |  |  | 2021-02-25 09:00 | 2021-02-25 09:00 |  |  |  |  | 16h |  |  |  |
| 8 | 1.1.3.1 | 唤醒服务器【输出：接口文档 和 runapi接口用例】123123 |  | 2d | 2021-02-26 08:30 | 2021-03-02 08:30 |  |  |  |  | 2978d |  |  | 黄子杰 | 16h |  | -4294923037.65 |  |
| 9 | 1.1.4 | **[6836]支持虚拟机动态调度** |  | 6d? | 2021-02-26 08:30 | 2021-03-08 08:30 |  |  | 2021-02-25 09:00 | 2021-02-25 09:00 |  |  |  |  | 40h |  |  |  |
| 10 | 1.1.4.1 | [开发]支持虚拟机动态调度 接口开发、内部逻辑实现【输出： runapi接口用例】 | manual | 5d | 2021-04-07 08:00 | 2021-04-12 17:00 |  |  |  |  |  |  |  | 黄子杰 | 40h |  | -4294922996.29 |  |
| 11 | 1.1.5 | **[6833]支持桌面批量动态迁移** |  | 1d? | 2021-02-26 08:30 | 2021-03-01 08:30 |  |  | 2021-02-25 09:00 | 2021-02-25 09:00 |  |  |  |  | 23.5h |  |  |  |
| 12 | 1.1.5.1 | **开发 支持桌面批量动态迁移** |  | 1d? | 2021-02-26 08:30 | 2021-03-01 08:30 |  |  |  |  |  |  |  |  | 23.5h |  |  |  |
| 13 | 1.1.5.1.1 | 开发 桌面迁移接口 |  | 0.94d | 2021-04-07 08:30 | 2021-04-07 17:30 |  |  |  |  | 2951.06d | 10.5d | finish no earlier than 2021-04-07 17:30 | 田怡文 | 7.5h |  | -4294923001.27 |  |
| 14 | 1.1.5.1.2 | 功能联调/自测 【输出：自测用例】 | manual | 1d | 2021-04-20 13:00 | 2021-04-21 12:00 | 13 |  |  |  |  |  |  | 胡海; 田怡文 | 16h |  | -4294922987.5 |  |
| 15 | 1.1.6 | **[6816]桌面定时创建** |  | 2d? | 2021-02-26 08:30 | 2021-03-02 08:30 |  |  | 2021-02-25 09:00 | 2021-02-25 09:00 |  |  |  |  | 4h |  |  |  |
| 16 | 1.1.6.1 | 桌面定时创建 |  | 0.5d | 2021-04-08 08:30 | 2021-04-08 13:30 |  |  |  |  | 2951.5d |  | start no earlier than 2021-04-08 08:30 | 田怡文 | 4h |  | -4294923000.44 |  |
| 17 | 1.1.7 | **[6835]桌面内存和CPU阈值告警** |  | 1d? | 2021-02-26 08:30 | 2021-03-01 08:30 |  |  | 2021-02-25 09:00 | 2021-02-25 09:00 |  |  |  |  | 7.5h |  | -0.67 |  |
| 18 | 1.1.7.1 | [开发]桌面内存和CPU阈值告警 |  | 0.94d | 2021-04-06 08:30 | 2021-04-06 17:30 |  |  |  |  | 2953.06d |  | finish no earlier than 2021-04-06 17:30 | 田怡文 | 7.5h |  | -4294923002.27 |  |
| 19 | 1.1.8 | [6838]信创部分-国产终端自检测工具 | manual | 0.5d | 2021-04-08 08:30 | 2021-04-08 13:30 |  |  |  |  |  |  |  | 黄子杰 | 4h |  | -4294923000.44 | 因为刚开始算的时候，没有考虑，客户端自测的时间，一共花了1.5天时间，多的时间加班完成的间。 |
| 20 | 1.1.9 | **[6980]【信创部分】账号绑定终端需求描述** |  | 3d? | 2021-02-26 08:30 | 2021-03-03 08:30 |  |  |  |  |  |  |  |  | 4h |  |  |  |
| 21 | 1.1.9.1 | 前端开发 账号绑定终端 | manual | 0.5d | 2021-04-08 08:30 | 2021-04-08 13:30 |  |  |  |  |  |  |  | 黄子杰 | 4h |  | -4294923000.44 |  |
| 22 | 1.1.10 | **打印机限制** |  | 1d? | 2021-02-26 08:30 | 2021-03-01 08:30 |  |  |  |  |  |  |  |  | 8h |  |  |  |
| 23 | 1.1.10.1 | 前端开发 | manual | 1d | 2021-04-16 08:30 | 2021-04-16 17:30 |  |  |  |  |  |  |  | 田怡文 | 8h |  | -4294922992.27 |  |
| 24 | 1.1.11 | **协议带宽和画面质量限制** |  | 1d? | 2021-02-26 08:30 | 2021-03-01 08:30 |  |  |  |  |  |  |  |  | 8h |  |  |  |
| 25 | 1.1.11.1 | 前端开发 | manual | 1d | 2021-04-09 08:30 | 2021-04-09 17:30 |  |  |  |  |  |  |  | 王川 | 8h |  | -4294922999.27 |  |

Notes:
- 6: 责任人：魏洪 参与人：黄子杰
- 8: 责任人：章传胜 参与人：黄子杰...
- 9: 责任人：胡海 参与人：黄子杰、羿中引
- 10: 节点列表接口 / 新增接口 / 列表接口 / 详情接口 / 编辑接口 / 搜索接口 / 删除接口 / 内部逻辑实现
- 11: 责任人：胡海 参与人：羿中引、田怡文
- 17: 责任人：魏洪 参与人：田怡文、陈小虎、周天文
- 24: 参与人：阮泽林,张垚

| ID | WBS | Task | Type | Duration | Start | Finish | Predecessors | Baseline 1 start | Baseline 1 finish | Resources | Work | 延期 |
| --- | --- | --- | --- | --- | --- | --- | --- | --- | --- | --- | --- | --- |
| 26 | 1.1.12 | **支持虚拟机定时策略** |  | 0.5d? | 2021-02-26 08:30 | 2021-02-26 13:30 |  |  |  |  | 4h |  |
| 27 | 1.1.12.1 | 前端开发 | manual | 0.5d | 2021-04-08 08:30 | 2021-04-08 13:30 |  |  |  | 田怡文 | 4h | -4294923000.44 |
| 28 | 1.1.13 | **usb重定向移动到策略** |  | 1d? | 2021-02-26 08:30 | 2021-03-01 08:30 | 25 |  |  |  | 8h |  |
| 29 | 1.1.13.1 | 前端开发 | manual | 1d | 2021-04-10 08:30 | 2021-04-10 17:30 |  |  |  | 王川 | 8h | -4294922998.27 |
| 30 | 1.1.14 | **VDI功能迁移** |  | 3d? | 2021-02-26 08:30 | 2021-03-03 08:30 |  |  |  |  | 24h |  |
| 31 | 1.1.14.1 | [6289]优化桌面创建 | manual | 1d | 2021-04-26 08:30 | 2021-04-26 17:30 |  |  |  | 田怡文 | 8h | -4294922982.27 |
| 32 | 1.1.14.2 | [6044]服务器时间同步 | manual | 1d | 2021-04-25 08:30 | 2021-04-25 17:30 |  |  |  | 田怡文 | 8h | -4294922983.27 |
| 33 | 1.1.14.3 | [6035]优化主控操作限制和提示信息 | manual | 1d | 2021-04-27 08:30 | 2021-04-27 17:30 |  |  |  | 田怡文 | 8h | -4294922981.27 |
| 34 | 1.1.15 | **三权分立** |  | 1d? | 2021-02-26 08:30 | 2021-03-01 08:30 |  |  |  |  | 8h |  |
| 35 | 1.1.15.1 | 前端开发 | manual | 1d | 2021-04-19 08:30 | 2021-04-19 17:30 |  |  |  | 田怡文 | 8h | -4294922989.27 |
| 36 | 1.1.16 | 桌面迁移 | manual | 0.5d | 2021-04-07 08:30 | 2021-04-07 13:30 |  |  |  | 黄子杰 | 4h | -4294923001.44 |
| 37 | 1.1.17 | 高级桌面 | manual | 0.5d | 2021-04-07 08:30 | 2021-04-07 13:30 |  |  |  | 黄子杰 | 4h | -4294923001.44 |
| 38 | 1.1.18 | **应用虚拟化开发计划** |  | 6d? | 2021-02-26 08:30 | 2021-03-08 08:30 |  | 2009-11-16 09:00 | 2021-04-22 09:00 |  | 32h |  |
| 39 | 1.1.18.1 | **管理台前端** |  | 2.5d? | 2021-02-26 08:30 | 2021-03-02 13:30 |  |  |  |  | 20h |  |
| 40 | 1.1.18.1.1 | 云应用删除模块 | manual | 0.5d | 2021-04-06 08:30 | 2021-04-06 13:30 |  |  |  | 戴琪冉 | 4h | -4294923002.44 |
| 41 | 1.1.18.1.2 | 云应用编辑模块 | manual | 0.5d | 2021-04-07 08:30 | 2021-04-07 13:30 |  |  |  | 戴琪冉 | 4h | -4294923001.44 |
| 42 | 1.1.18.1.3 | 云应用发布模块和发布操作 | manual | 1.5d | 2021-04-02 08:30 | 2021-04-06 13:30 |  |  |  | 王川 | 12h | -4294923002.44 |
| 43 | 1.1.18.2 | **云应用客户端** |  | 1d? | 2021-02-26 08:30 | 2021-03-01 08:30 |  |  |  |  | 12h |  |
| 44 | 1.1.18.2.1 | 云应用客户端 | manual | 1d | 2021-04-07 08:30 | 2021-04-07 17:30 |  |  |  | 王川 | 8h | -4294923001.27 |
| 45 | 1.1.18.2.2 | 客户端交互说明 | manual | 0.5d | 2021-04-08 08:00 | 2021-04-10 11:30 |  |  |  | 王川 | 4h | -4294922998.52 |
| 46 | 1.1.19 | **信创终端相关开发计划** |  | 15d? | 2021-02-26 08:30 | 2021-03-19 08:30 |  |  |  |  | 48h |  |
| 47 | 1.1.19.1 | [6514][6991]接入桌面闲置挂起策略 | manual | 1d | 2021-04-08 08:30 | 2021-04-08 17:30 |  |  |  | 田怡文 | 8h | -4294923000.27 |
| 48 | 1.1.19.2 | **支持软终端程序升级更新** |  | 1d? | 2021-02-26 08:30 | 2021-03-01 08:30 |  |  |  |  | 8h |  |
| 49 | 1.1.19.2.1 | 前端开发 | manual | 1d | 2021-04-16 08:30 | 2021-04-16 17:30 |  |  |  | 王川 | 8h | -4294922992.27 |

Notes:
- 40: 王川完成
- 41: 王川完成
- 42: 王川完成
- 47: 参与人：贾志浩、王川

| ID | WBS | Task | Type | Duration | Start | Finish | Remaining | Baseline 1 start | Baseline 1 finish | Constraint | Resources | Work | Actual work | 延期 | 备注时间变动 |
| --- | --- | --- | --- | --- | --- | --- | --- | --- | --- | --- | --- | --- | --- | --- | --- |
| 50 | 1.1.19.3 | **[6825]支持多屏展示** |  | 3d? | 2021-02-26 08:30 | 2021-03-03 08:30 |  |  |  |  |  | 16h |  |  |  |
| 51 | 1.1.19.3.1 | 前端开发 | manual | 2d | 2021-04-23 08:30 | 2021-04-26 08:30 |  |  |  | start no earlier than 2021-04-23 08:30 | 田怡文 | 16h |  | -4294922982.65 |  |
| 52 | 1.1.19.4 | **软件程序安装限制功能** |  | 2d? | 2021-02-26 08:30 | 2021-03-02 08:30 |  |  |  |  |  | 16h |  |  |  |
| 53 | 1.1.19.4.1 | 前端开发 | manual | 2d | 2021-04-14 08:30 | 2021-04-15 17:30 |  |  |  |  | 王川 | 16h |  | -4294922993.27 |  |
| 54 | 1.1.20 | **待明确任务** |  | 44.5d? | 2021-02-26 08:30 | 2021-04-27 13:30 |  |  |  |  |  | 4h |  |  |  |
| 55 | 1.1.20.1 | **[6832]虚拟机在线克隆** |  | 1d? | 2021-02-26 08:30 | 2021-03-01 08:30 |  | 2021-02-25 09:00 | 2021-02-25 09:00 |  |  | 4h |  |  |  |
| 56 | 1.1.20.1.1 | [前端]虚拟机在线克隆 | manual | 0.5d | 2021-04-19 08:30 | 2021-04-19 13:30 |  |  |  |  | 黄子杰 | 4h |  | -4294922989.44 |  |
| 57 | 1.2 | **【X86和ARM架构融合】前端** |  | 3.5d? | 2021-02-26 08:30 | 2021-03-03 13:30 |  |  |  |  |  | 32h |  |  |  |
| 58 | 1.2.1 | [7016[资源池调整说明 | manual | 1d | 2021-04-15 08:30 | 2021-04-15 17:30 |  |  |  |  | 田怡文 | 8h |  | -4294922993.27 |  |
| 59 | 1.2.2 | [7017]分布式存储调整说明 | manual | 1d | 2021-04-17 08:30 | 2021-04-19 08:30 |  |  |  |  | 王川 | 8h |  | -4294922989.65 |  |
| 60 | 1.2.3 | [7015]主备控限制说明（错误码） | manual | 0.5d | 2021-04-17 08:30 | 2021-04-17 13:30 |  |  |  |  | 黄子杰 | 4h |  | -4294922991.44 |  |
| 61 | 1.2.4 | [7018]新增个人/公共模板调整说明 | manual | 0.5d | 2021-04-19 08:30 | 2021-04-19 13:30 |  |  |  |  | 田怡文 | 4h |  | -4294922989.44 |  |
| 62 | 1.2.5 | [7019]安装包调整说明 | milestone, manual | 0d | 2021-04-19 08:30 | 2021-04-19 08:30 |  |  |  |  | 黄子杰 |  |  | -4294922989.65 |  |
| 63 | 1.2.6 | [7020]桌面部分调整（个人桌面、公共桌面、个人桌面池、漫游桌面） | manual | 0.5d | 2021-04-19 08:30 | 2021-04-19 13:30 |  |  |  |  | 黄子杰 | 4h |  | -4294922989.44 | 这个实际上涉及到的改动界面较多，后端分两天给的方案和字段，故加班完成。 |
| 64 | 1.2.7 | [7021]系统桌面（错误码） | manual | 0.5d | 2021-04-19 08:30 | 2021-04-19 13:30 |  |  |  |  | 黄子杰 | 4h |  | -4294922989.44 |  |
| 65 | 1.3 | **5.3.0融合版通用bug合并** |  | 3d? | 2021-02-26 08:30 | 2021-03-03 08:30 |  |  |  |  |  | 48h |  |  |  |
| 66 | 1.3.1 | 黄子杰部分 | manual | 3d | 2021-04-20 08:30 | 2021-04-22 17:30 |  |  |  |  | 黄子杰 | 24h |  | -4294922986.27 |  |
| 67 | 1.3.2 | 王川部分 | manual | 2d | 2021-04-20 08:30 | 2021-04-21 17:30 |  |  |  |  | 王川 | 16h |  | -4294922987.27 |  |
| 68 | 1.3.3 | 田怡文部分通用bug合并 | manual | 1d | 2021-04-21 08:30 | 2021-04-21 17:30 |  |  |  |  | 田怡文 | 8h |  | -4294922987.27 |  |
| 69 | 1.4 | **分支合并：5.2.0-uos更改手动合并到5.3.0-vpc** |  | 10d? | 2021-02-26 08:30 A | 2021-03-12 08:30 | 10d? |  |  |  |  | 80h | 8h |  |  |
| 70 | 1.4.1 | 合并UOS和VPC分支中的模板模块并解决冲突 | manual | 1d | 2021-04-13 08:30 | 2021-04-13 17:30 |  |  |  |  | 田怡文 | 8h |  | -4294922995.27 |  |
| 71 | 1.4.2 | 合并两个分支并解决冲突 | manual | 2d | 2021-04-13 08:30 | 2021-04-14 17:30 |  |  |  |  | 黄子杰 | 16h |  | -4294922994.27 |  |
| 72 | 1.4.3 | 合并分支并解决冲突 | manual | 1d | 2021-04-13 08:30 | 2021-04-13 17:30 |  |  |  |  | 王川 | 8h |  | -4294922995.27 |  |
| 73 | 1.4.4 | **6889 【VPC5.3.0】 安全部分-用户自主创建恢复快照(v1)** |  | 1d | 2021-04-23 08:30 A | 2021-04-23 17:30 | 1d |  |  |  | 王川 | 32h | 8h |  |  |
| 74 | 1.4.4.1 | 【前端】用户自主创建恢复快照(v1) | manual | 1d | 2021-04-23 08:30 | 2021-04-23 17:30 |  |  |  |  | 王川 | 8h |  | -4294922985.27 |  |
| 75 | 1.4.4.2 | 【联调】用户自主创建恢复快照(v1) | manual | 1d | 2021-04-23 08:30 | 2021-04-23 17:30 |  |  |  |  | 贾志浩; 王川 | 16h |  | -4294922985.27 |  |

Notes:
- 55: 责任人：胡海 参与人：羿中引、黄子杰 [待确认方案]

| ID | WBS | Task | Type | Duration | Start | Finish | Resources | Work | 延期 |
| --- | --- | --- | --- | --- | --- | --- | --- | --- | --- |
| 76 | 1.4.5 | **信创OEM同方** |  | 1d? | 2021-02-26 08:30 | 2021-03-01 08:30 |  | 16h |  |
| 77 | 1.4.5.1 | 信创OEM同方-客户端 | manual | 1d | 2021-05-07 08:00 | 2021-05-07 17:00 | 王川 | 8h | -4294922971.29 |
| 78 | 1.4.5.2 | 信创OEM同方-管理台部分 | manual | 1d | 2021-05-07 08:00 | 2021-05-07 17:00 | 田怡文 | 8h | -4294922971.29 |
