# OE_VPC5.3.0_PP_项目进度计划V1.3

Schedule from MS Project, 2021-03-09 to 2032-08-12, A marks actual dates.

## Calendars

- v.4.1: Mon-Fri 08:00-12:00, 13:00-17:00; Sat-Sun off. Exceptions (off unless hours are given): 2021-04-03 to 2021-04-05 (清明节), 2021-05-01 to 2021-05-05 (五一), 2021-05-08 08:00-12:00, 13:00-17:00 (工作日).

## Resources

| Resource |
| --- |
| 袁阳 |
| 王梦雄 |
| 邹宇会 |
| 张垚 |
| 阮泽林 |
| 章传胜 |
| 魏洪 |
| 杨燕思 |
| 贾志浩 |
| 胡海 |
| 羿中引 |
| 周天文 |
| 陈小虎 |
| 王川 |
| 田怡文 |
| 黄子杰 |
| 余维伟 |
| 童春月 |
| 万红 |
| 魏聪 |
| 周宇会 |
| 朱晓坤 |
| 朱晓琨 |
| 周姚 |
| ALL |
| 朱盼 |
| 戴琪冉 |
| 刘海军 |
| 黄 |

## Schedule

| ID | WBS | Task | Type | Duration | Start | Finish | Predecessors | Complete | Remaining | Baseline 1 start | Baseline 1 finish | Constraint | Resources | Work | Actual work | 延期 |
| --- | --- | --- | --- | --- | --- | --- | --- | --- | --- | --- | --- | --- | --- | --- | --- | --- |
| 1 | 1 | **VPC需求细化：输出 需求文档、原型、流程图** |  | 2980d? | 2021-03-09 A | 2032-08-12 |  | 24% | 2252.04d? | 2009-11-16 | 2021-04-22 |  |  | 1230h | 343h |  |
| 2 | 1.1 | 需求讨论 | manual | 2d | 2021-03-09 A | 2021-03-10 A |  | 100% |  |  |  |  | 袁阳 | 32h | 32h |  |
| 3 | 1.2 | 里程碑<打新分支，自动化测试>5.3.0vpc | milestone, manual | 0d | 2021-03-26 | 2021-03-26 |  |  |  |  |  |  | 周姚 |  |  |  |
| 5 | 1.3 | 新建arm分支 [5.3.0-vpcarm] | manual | 1d | 2021-04-02 | 2021-04-02 |  |  |  |  |  |  | 朱晓琨 | 8h |  | -4294923006.27 |
| 6 | 1.4 | 自动化测试5.3.0-vpcarm | milestone, manual | 0d | 2021-04-05 | 2021-04-05 | 5 |  |  |  |  |  | 周姚 |  |  | -4294923003.67 |
| 7 | 1.5 | **vpc、uos版本分支代码更新[5.3.0-dev ---->5.3.0-vpc--->5.3.0-vpc-uos] 【每周一开展】** |  | 11d? | 2021-03-09 | 2021-03-23 |  |  |  |  |  |  | 贾志浩 | 88h |  |  |
| 8 | 1.5.1 | vpc、uos版本分支代码更新[5.3.0-dev ---->5.3.0-vpc--->5.3.0-vpc-uos] 【每周一开展】 | manual | 1d | 2021-04-12 | 2021-04-13 |  |  |  |  |  | start no earlier than 2021-04-12 |  |  |  | -4294922995.65 |
| 9 | 1.5.2 | vpc、uos版本分支代码更新[5.3.0-dev ---->5.3.0-vpc--->5.3.0-vpc-uos] 【每周一开展】 | manual | 1d | 2021-04-19 | 2021-04-20 |  |  |  |  |  | start no earlier than 2021-04-19 |  |  |  | -4294922988.65 |
| 10 | 1.5.3 | vpc、uos版本分支代码更新[5.3.0-dev ---->5.3.0-vpc--->5.3.0-vpc-uos] 【每周一开展】 | manual | 1d | 2021-04-26 | 2021-04-27 |  |  |  |  |  | start no earlier than 2021-04-26 |  |  |  | -4294922981.65 |
| 11 | 1.6 | 里程碑<5.3.0-vpcarm> | milestone, manual | 0d | 2021-04-06 | 2021-04-06 |  |  |  |  |  |  | 胡海; 贾志浩; 魏洪; 杨燕思; 章传胜; 周天文; 朱晓琨 |  |  | -4294923002.65 |
| 12 | 1.7 | **代码审查【每周三】** |  | 13d? | 2021-03-09 | 2021-03-25 |  |  |  |  |  |  |  |  |  |  |
| 13 | 1.7.1 | 代码审查【每周三】 1 | milestone, manual | 0d | 2021-04-14 | 2021-04-14 |  |  |  |  |  | start no earlier than 2021-04-14 | 陈小虎; 魏洪; 杨燕思; 章传胜; 周天文; 朱晓琨 |  |  | -4294922994.65 |
| 14 | 1.7.2 | 代码审查【每周三】 2 | milestone, manual | 0d | 2021-04-21 | 2021-04-21 |  |  |  |  |  | start no earlier than 2021-04-21 |  |  |  | -4294922987.65 |
| 15 | 1.7.3 | 代码审查【每周三】 3 | milestone, manual | 0d | 2021-04-28 | 2021-04-28 |  |  |  |  |  | start no earlier than 2021-04-28 |  |  |  | -4294922980.65 |
| 16 | 1.7.4 | 代码审查【每周三】 4 | milestone, manual | 0d | 2021-05-05 | 2021-05-05 |  |  |  |  |  | start no earlier than 2021-05-05 |  |  |  | -4294922973.65 |
| 18 | 1.8 | **功能联调** |  | 1d? | 2021-03-09 A | 2021-03-09 |  | 50% | 0.5d? |  |  |  |  | 16h | 8h |  |
| 19 | 1.8.1 | 服务器开启trim功能 | milestone, manual | 0d | 2021-04-12 A | 2021-04-12 A |  | 100% |  | 2021-03-01 | 2021-03-01 |  |  |  |  | -4294922996.65 |
| 20 | 1.8.2 | 数字证书替换 | milestone, manual | 0d | 2021-03-09 A | 2021-03-09 A |  | 100% |  |  |  |  | 魏洪 |  |  | -4294923030.67 |
| 21 | 1.8.3 | [6820]漫游桌面 虚拟机信息导出 【输出：接口文档】 | milestone, manual | 0d | 2021-03-29 A | 2021-03-29 A |  | 100% |  |  |  |  | 魏洪 |  |  | -0.79 |
| 22 | 1.8.4 | [6819]公共桌面 虚拟机信息导出 【输出：接口文档】 | milestone, manual | 0d | 2021-03-30 A | 2021-03-30 A | 21 | 100% |  |  |  |  | 魏洪 |  |  | -0.21 |
| 23 | 1.8.5 | [6817]个人桌面 虚拟机信息导出 【输出：接口文档】 | milestone, manual | 0d | 2021-03-31 A | 2021-03-31 A | 26 | 100% |  |  |  |  | 魏洪 |  |  | -0.21 |
| 24 | 1.8.6 | [6828]虚拟机上下行带宽 【输出：接口文档】 | milestone, manual | 0d | 2021-03-09 A | 2021-03-09 A |  | 100% |  |  |  |  | 魏洪 |  |  | -4294923030.67 |
| 25 | 1.8.7 | [6823] 桌面定时重启 【输出：接口文档】 | milestone, manual | 0d | 2021-03-09 A | 2021-03-09 A |  | 100% |  |  |  |  | 魏洪 |  |  | -4294923030.67 |
| 26 | 1.8.8 | [6818]个人桌面池 虚拟机信息导出 【输出：接口文档】 | manual | 1d | 2021-03-09 A | 2021-03-09 A |  | 100% |  |  |  |  | 魏洪 | 8h | 8h | -21.65 |
| 27 | 1.8.9 | [6890]漏扫低风险点完善 【输出：接口文档】 | milestone, manual | 0d | 2021-03-09 A | 2021-03-09 A |  | 100% |  |  |  |  | 贾志浩; 王川; 田怡文 |  |  | -4294923030.67 |
| 28 | 1.8.10 | [6821]信创部分-虚拟机导出 【输出：接口文档】 | manual | 1d | 2021-04-06 | 2021-04-07 | 11 |  |  |  |  |  | 魏洪 | 8h |  | -4294923001.65 |

Notes:
- 3: 新分支，通过自动测试
- 5: 5.3.0-vpc-->5.3.0-vpcarm 5.3.0-vpcarm-->5.3.0-feature-vpcarm-common
- 8: 1. 每周一 将5.3.0-dev --合并-->5.3.0-vpc 并开展自动化测试 / 目的：保障vdi修改的bug代码能及时同步至vpc版本中 / 2. 继续将5.3.0-vpc--合并-->5.3.0-vpc-uos并开展自动化测试 / 目的：保障vdi修改的bug代码能及时同步至vpc-vos版本中
- 11: 打出开发分支、arm主分支 / 5.3.0-vpcarm 主分支 / 5.3.0-vpcarm-common 开发分支
- 12: 如果有代码需要审查，暂定每周三下午
- 19: 已经开发完成
- 21: 负责人：魏洪，参与人：田怡文
- 22: 负责人：魏洪，参与人：田怡文
- 23: 负责人：魏洪，参与人：田怡文
- 26: 负责人：魏洪，参与人：田怡文

| ID | WBS | Task | Type | Duration | Start | Finish | Predecessors | Complete | Remaining | Actual start | Actual finish | Baseline 1 start | Baseline 1 finish | Constraint | Resources | Work | Actual work | 延期 |
| --- | --- | --- | --- | --- | --- | --- | --- | --- | --- | --- | --- | --- | --- | --- | --- | --- | --- | --- |
| 30 | 1.9 | **UOS开发任务** |  | 55d? | 2021-03-09 A | 2021-05-27 |  | 24% | 42.01d? |  |  |  |  |  |  | 1026h | 275h |  |
| 31 | 1.9.1 | **4.3.0 VDI功能迁移至VPC** |  | 1d? | 2021-03-09 | 2021-03-09 |  |  |  |  |  |  |  |  |  |  |  |  |
| 32 | 1.9.1.1 | 后台代码迁移内容【见备注】 | milestone, manual | 0d | 2021-04-06 | 2021-04-06 | 11 |  |  |  |  |  |  |  | 杨燕思 |  |  |  |
| 33 | 1.9.2 | **[6829]批量解关联用户** |  | 0.5d? | 2021-03-09 | 2021-03-09 |  | 100% |  | 2021-04-07 | 2021-04-08 | 2021-02-25 | 2021-02-25 |  |  | 12h | 12h | 25.33 |
| 34 | 1.9.2.1 | 批量解关联用户 |  | 0.5d | 2021-04-07 A | 2021-04-07 A | 28 | 100% |  |  |  |  |  | start no earlier than 2021-04-01 | 黄子杰 | 4h | 4h | 5.21 |
| 35 | 1.9.2.2 | [联调]批量解关联用户 | manual | 0.5d | 2021-04-07 A | 2021-04-08 A | 34 | 100% |  |  |  |  |  |  | 黄子杰; 魏洪 | 8h | 8h | 5.79 |
| 36 | 1.9.3 | **[6830]唤醒服务器** |  | 1d? | 2021-03-09 | 2021-03-09 |  | 100% |  | 2021-04-06 | 2021-04-12 | 2021-02-25 | 2021-02-25 |  |  | 48h | 48h |  |
| 37 | 1.9.3.1 | 唤醒服务器【输出：接口文档 和 runapi接口用例】 |  | 2d | 2021-04-06 A | 2021-04-08 A | 11 | 100% |  |  |  |  |  |  | 黄子杰 | 16h | 16h | -8.35 |
| 38 | 1.9.3.2 | [联调]唤醒服务器 【输出：自测用例】 | manual | 2d | 2021-04-08 A | 2021-04-12 A | 37 | 100% |  |  |  |  |  |  | 章传胜; 黄子杰 | 32h | 32h | -8.35 |
| 39 | 1.9.4 | **[6836]支持虚拟机动态调度** |  | 13d? | 2021-03-09 A | 2021-03-25 |  | 46% | 7.06d? |  |  | 2021-02-25 | 2021-02-25 |  |  | 87.5h | 40h |  |
| 40 | 1.9.4.1 | 设计和评审【输出： 详细设计 、数据库设计、接口文档】 | manual | 0.94d | 2021-04-06 | 2021-04-06 | 11 |  |  |  |  |  |  |  | 胡海 | 7.5h |  | -4294923002.29 |
| 41 | 1.9.4.2 | [开发]支持虚拟机动态调度 接口开发、内部逻辑实现【输出： runapi接口用例】 | manual | 5d | 2021-04-07 A | 2021-04-13 A | 40 | 100% |  |  |  |  |  |  | 黄子杰 | 40h | 40h | -1 |
| 42 | 1.9.4.3 | **[联调] 支持虚拟机动态调度** |  | 5d? | 2021-03-09 | 2021-03-15 |  |  |  |  |  |  |  |  |  | 40h |  |  |
| 43 | 1.9.4.3.1 | 功能联调 | manual | 3d | 2021-04-14 | 2021-04-21 | 41 |  |  |  |  |  |  |  | 黄子杰 | 24h |  |  |
| 44 | 1.9.4.3.2 | 功能联调/自测 【输出：自测用例】 | manual | 2d | 2021-04-14 | 2021-04-15 | 41 |  |  |  |  |  |  |  | 胡海 | 16h |  | -6 |
| 45 | 1.9.5 | **[6833]支持桌面批量动态迁移** |  | 1d? | 2021-03-09 | 2021-03-09 |  | 48% | 0.52d? | 2021-04-07 |  | 2021-02-25 | 2021-02-25 |  |  | 23.5h | 7.5h |  |
| 46 | 1.9.5.1 | **开发 支持桌面批量动态迁移** |  | 1.5d | 2021-03-09 | 2021-03-10 |  | 48% | 0.77d | 2021-04-07 |  |  |  |  |  | 23.5h | 7.5h |  |
| 47 | 1.9.5.1.1 | 开发 桌面迁移接口 |  | 0.94d | 2021-04-07 A | 2021-04-07 A |  | 100% |  |  |  |  |  | finish no earlier than 2021-04-07 | 田怡文 | 7.5h | 7.5h | -18.77 |
| 48 | 1.9.5.1.2 | 功能联调/自测 【输出：自测用例】 | manual | 1d | 2021-04-20 | 2021-04-21 | 47 |  |  |  |  |  |  |  | 胡海; 田怡文 | 16h |  | -8 |
| 49 | 1.9.6 | **[6816]桌面定时创建** |  | 2d? | 2021-03-09 | 2021-03-10 |  | 33% | 1.33d? | 2021-04-08 |  | 2021-02-25 | 2021-02-25 |  |  | 20h | 4h |  |
| 50 | 1.9.6.1 | 桌面定时创建 |  | 0.5d | 2021-04-08 A | 2021-04-08 A |  | 100% |  |  |  |  |  | start no earlier than 2021-04-08 | 田怡文 | 4h | 4h | -21.94 |
| 51 | 1.9.6.2 | [联调]桌面定时创建 【输出：自测用例】 | manual | 1d | 2021-04-22 | 2021-04-23 | 50 |  |  |  |  |  |  |  | 胡海; 田怡文 | 16h |  | -13 |
| 52 | 1.9.7 | **[6835]桌面内存和CPU阈值告警** |  | 1d? | 2021-03-09 | 2021-03-09 |  | 100% |  | 2021-04-06 | 2021-04-09 | 2021-02-25 | 2021-02-25 |  |  | 15.5h | 15.5h | -0.67 |
| 53 | 1.9.7.1 | [开发]桌面内存和CPU阈值告警 |  | 0.94d | 2021-04-06 A | 2021-04-06 A |  | 100% |  |  |  |  |  | finish no earlier than 2021-04-06 | 田怡文 | 7.5h | 7.5h | -2.63 |
| 54 | 1.9.7.2 | [联调]桌面内存和CPU阈值告警【输出：自测用例】 | manual | 0.5d | 2021-04-09 A | 2021-04-09 A | 53 | 100% |  |  |  |  |  |  | 田怡文; 魏洪 | 8h | 8h |  |
| 55 | 1.9.8 | [6838]信创部分-国产终端自检测工具 | manual | 0.5d | 2021-04-08 A | 2021-04-08 A |  | 100% |  |  |  |  |  |  | 黄子杰 | 4h | 4h | -4 |

Notes:
- 32: 会议讨论对需要复用或基于教育版进行调整（标红部分为调整项或补充项）需求改的内容如下： / 1、将教育版未实现的VOI主从服务修改为端对端同传和跨VLAN广播。 --周天文 / 2、支持第三方DHCP部署VOI底层客户端。 ---魏洪 / 3、vdi Linux客户端底层系统替换。--陈小虎 / 4、定量检测平台的复用，不需要支持ARM服务器。 --王梦熊 / 5、优化桌面创建规则。 --胡海 / 6、优化主控HA操作限制和提示信息（核对教育版需求是否存在不适用VPC的点，需要进行修改）--贾志浩 / 7、提供服务器时间同步策略，【新增】加入每十分钟同步一次和每半个小时同步一次。--魏洪 / 8、优化系统桌面默认值和系统桌面提示信息。 --杨燕思 / 9、VOI和IDV教学模板加上对分享链接的支持 --胡海 / 10、账号导入功能优化，VPC逻辑与教育版不一致，需要【修改】。 ---贾志浩 / 11、在VDI环境下支持跨vlan唤醒。 --周天文 / 12、VOI终端增加快速定位终端进入的桌面 --魏聪 胡文峰 【vid vpc】 邹宇会补需求 / 13、VOI维护模式支持尾号是0的IP。--vdi vpc 徐帆【无工作量】 / 14、交换机分组中加入升/降序功能。--？ / 15、对模板的镜像空间优化（qcow2的磁盘特性问题） --羿 【无工作量】 / 16、任务队列模块（根据后续测试结论，在定义开或者关） --朱 / 不需要的功能点如下： / 资源域、裸机部署、单点故障、VDI、VOI指定分辨率、模板闲置、多媒体上下课场景释放、场景信息展示
- 34: 责任人：魏洪 参与人：黄子杰
- 37: 责任人：章传胜 参与人：黄子杰...
- 39: 责任人：胡海 参与人：黄子杰、羿中引
- 40: 输出： 详细设计 / 数据库设计 / 接口文档（showdoc编写）
- 41: 节点列表接口 / 新增接口 / 列表接口 / 详情接口 / 编辑接口 / 搜索接口 / 删除接口 / 内部逻辑实现
- 45: 责任人：胡海 参与人：羿中引、田怡文
- 51: 责任人：胡海 参与人：田怡文
- 52: 责任人：魏洪 参与人：田怡文、陈小虎、周天文

| ID | WBS | Task | Type | Duration | Start | Finish | Predecessors | Complete | Remaining | Actual start | Total slack | Resources | Work | Actual work | 延期 |
| --- | --- | --- | --- | --- | --- | --- | --- | --- | --- | --- | --- | --- | --- | --- | --- |
| 56 | 1.9.9 | **[6980]【信创部分】账号绑定终端需求描述** |  | 3d? | 2021-03-09 | 2021-03-11 |  | 20% | 2.4d? | 2021-04-08 |  |  | 36h | 4h |  |
| 57 | 1.9.9.1 | 前端开发 账号绑定终端 | manual | 0.5d | 2021-04-08 A | 2021-04-08 A | 38 | 100% |  |  |  | 黄子杰 | 4h | 4h | -4294923000.44 |
| 58 | 1.9.9.2 | 联调 【输出：自测用例】 | manual | 2d | 2021-04-14 | 2021-04-16 | 57 |  |  |  |  | 章传胜; 黄子杰 | 32h |  | -4294922992.65 |
| 59 | 1.9.10 | **打印机限制** |  | 1d? | 2021-03-09 | 2021-03-09 |  |  |  |  |  |  | 16h |  |  |
| 60 | 1.9.10.1 | 前端开发 | manual | 1d | 2021-04-16 | 2021-04-16 | 54 |  |  |  |  | 田怡文 | 8h |  | -4294922992.27 |
| 61 | 1.9.10.2 | 联调 【输出：自测用例】 | manual | 0.5d | 2021-04-12 | 2021-04-13 | 60 |  |  |  |  | 魏洪; 田怡文 | 8h |  | -4294922995.65 |
| 62 | 1.9.11 | **协议带宽和画面质量限制** |  | 1d? | 2021-03-09 | 2021-03-09 |  | 34% | 0.66d? | 2021-04-09 |  |  | 31.5h | 8h |  |
| 63 | 1.9.11.1 | 前端开发 | manual | 1d | 2021-04-09 A | 2021-04-09 A | 61 | 100% |  |  |  | 王川 | 8h | 8h | -4294922999.27 |
| 64 | 1.9.11.2 | 联调 【输出：自测用例】 | manual | 1.94d | 2021-04-15 | 2021-04-30 | 63 |  |  |  |  | 魏洪; 王川 | 23.5h |  | -4294922978.38 |
| 65 | 1.9.12 | **支持虚拟机定时策略** |  | 0.5d | 2021-04-08 A | 2021-04-08 A |  | 100% |  |  |  |  | 4h | 4h |  |
| 66 | 1.9.12.1 | 前端开发 | manual | 0.5d | 2021-04-08 A | 2021-04-08 A |  | 100% |  |  |  | 田怡文 | 4h | 4h | -4294923000.44 |
| 67 | 1.9.13 | 模板导入、MD5校验 | manual | 2d | 2021-04-14 | 2021-04-16 | 63 |  |  |  |  | 魏洪 | 16h |  | -4294922992.65 |
| 68 | 1.9.14 | **usb重定向移动到策略** |  | 1d | 2021-04-10 A | 2021-04-12 |  | 50% | 0.5d |  | 0d |  | 24h | 8h |  |
| 69 | 1.9.14.1 | 前端开发 | manual | 1d | 2021-04-10 A | 2021-04-10 A |  | 100% |  |  |  | 王川 | 8h | 8h | -4294922998.27 |
| 70 | 1.9.14.2 | 联调-usb重定向移动到策略 | manual | 1d | 2021-04-12 | 2021-04-12 | 98 |  |  |  |  | 贾志浩; 王川 | 16h |  | -4294922996.29 |
| 71 | 1.9.15 | **VDI功能迁移** |  | 2.5d | 2021-04-20 | 2021-04-22 |  |  |  |  | 0d |  | 16h |  |  |
| 72 | 1.9.15.1 | [6289]优化桌面创建 | manual | 0.5d | 2021-04-22 | 2021-04-22 |  |  |  |  |  | 田怡文 | 4h |  | -4294922986.44 |
| 73 | 1.9.15.2 | [6044， 6019]服务器时间同步 | manual | 0.5d | 2021-04-20 | 2021-04-20 |  |  |  |  |  | 田怡文 | 4h |  | -4294922988.44 |
| 74 | 1.9.15.3 | [6035]优化主控操作限制和提示信息 | manual | 1d | 2021-04-21 | 2021-04-21 |  |  |  |  |  | 田怡文 | 8h |  | -4294922987.27 |
| 75 | 1.9.16 | **三权分立** |  | 5d | 2021-04-13 | 2021-04-19 |  |  |  |  | 0d |  | 16h |  |  |
| 76 | 1.9.16.1 | 前端开发 | manual | 1d | 2021-04-19 | 2021-04-19 |  |  |  |  |  | 田怡文 | 8h |  | -4294922989.27 |
| 77 | 1.9.16.2 | 联调-三权分立 | manual | 1d | 2021-04-13 | 2021-04-13 | 70 |  |  |  |  | 贾志浩 | 8h |  | -4294922995.29 |
| 78 | 1.9.17 | 添加磁盘 | milestone, manual | 0d | 2021-04-14 | 2021-04-14 |  |  |  |  |  | 刘海军 |  |  | -4294922994.65 |
| 79 | 1.9.18 | arm、 x86 功能迁移【输出：自测用例】 | manual | 5d | 2021-04-06 | 2021-04-13 | 11 |  |  |  |  | 朱晓琨 | 40h |  | -4294922995.65 |
| 80 | 1.9.19 | 桌面迁移 | manual | 0.5d | 2021-04-07 A | 2021-04-07 A |  | 100% |  |  |  | 黄子杰 | 4h | 4h | -4294923001.44 |
| 81 | 1.9.20 | 高级桌面 | manual | 0.5d | 2021-04-07 A | 2021-04-07 A |  | 100% |  |  |  | 黄子杰 | 4h | 4h | -4294923001.44 |

Notes:
- 61: 参与人： 周天文,张垚
- 62: 参与人：阮泽林,张垚
- 67: 参与人：张垚
- 70: 参与人： 张垚,周天文

| ID | WBS | Task | Type | Duration | Start | Finish | Predecessors | Complete | Remaining | Actual start | Actual finish | Baseline 1 start | Baseline 1 finish | Total slack | Resources | Work | Actual work | 延期 |
| --- | --- | --- | --- | --- | --- | --- | --- | --- | --- | --- | --- | --- | --- | --- | --- | --- | --- | --- |
| 82 | 1.9.21 | **应用虚拟化开发计划** |  | 6d? | 2021-03-09 A | 2021-03-16 |  | 35% | 3.87d? |  |  | 2009-11-16 | 2021-04-22 |  |  | 172h | 92h |  |
| 83 | 1.9.21.1 | **虚拟机** |  | 4d? | 2021-03-09 | 2021-03-12 |  |  |  |  |  |  |  |  |  | 32h |  |  |
| 84 | 1.9.21.1.1 | 云应用模板代理程序(app-agent)开发 | manual | 4d | 2021-04-01 | 2021-04-07 |  |  |  |  |  |  |  |  | 陈小虎 | 32h |  | -4294923001.27 |
| 85 | 1.9.21.2 | 管理台后端接口 【输出：接口文档，接口用例】 | manual | 1.5d | 2021-04-06 | 2021-04-07 | 11 |  |  |  |  |  |  |  | 贾志浩 | 12h |  | -4294923001.44 |
| 86 | 1.9.21.3 | **UOS** |  | 4d? | 2021-03-09 | 2021-03-12 |  |  |  |  |  |  |  |  |  | 32h |  | -4294923014.55 |
| 87 | 1.9.21.3.1 | 点击本地文件，使用匹配的云应用打开方法调研 | manual | 1d | 2021-04-01 | 2021-04-01 |  |  |  |  |  |  |  |  | 周天文 | 8h |  | -4294923007.27 |
| 88 | 1.9.21.3.2 | freerdp剪切板双向拷贝方法调研 | manual | 1d | 2021-04-02 | 2021-04-02 |  |  |  |  |  |  |  |  | 周天文 | 8h |  | -4294923006.27 |
| 89 | 1.9.21.3.3 | freerdp USB重定向验证 | manual | 1d | 2021-04-06 | 2021-04-06 |  |  |  |  |  |  |  |  | 周天文 | 8h |  | -4294923002.27 |
| 90 | 1.9.21.3.4 | freerdp执行脚本 | manual | 1d | 2021-04-07 | 2021-04-07 |  |  |  |  |  |  |  |  | 周天文 | 8h |  | -4294923001.27 |
| 91 | 1.9.21.4 | **管理台前端** |  | 2.5d? | 2021-03-09 | 2021-03-11 |  | 100% |  | 2021-04-02 | 2021-04-07 |  |  |  |  | 20h | 20h |  |
| 92 | 1.9.21.4.1 | 云应用删除模块 | manual | 0.5d | 2021-04-06 A | 2021-04-06 A |  | 100% |  |  |  |  |  |  | 戴琪冉 | 4h | 4h | -4294923002.44 |
| 93 | 1.9.21.4.2 | 云应用编辑模块 | manual | 0.5d | 2021-04-07 A | 2021-04-07 A |  | 100% |  |  |  |  |  |  | 戴琪冉 | 4h | 4h | -4294923001.44 |
| 94 | 1.9.21.4.3 | 云应用发布模块和发布操作 | manual | 1.5d | 2021-04-02 A | 2021-04-06 A |  | 100% |  |  |  |  |  |  | 王川 | 12h | 12h | -4294923002.44 |
| 95 | 1.9.21.5 | **云应用客户端** |  | 1d? | 2021-03-09 | 2021-03-09 |  | 67% | 0.33d? | 2021-04-07 |  |  |  |  |  | 12h | 8h |  |
| 96 | 1.9.21.5.1 | 云应用客户端 | manual | 1d | 2021-04-07 A | 2021-04-07 A |  | 100% |  |  |  |  |  |  | 王川 | 8h | 8h | -4294923001.27 |
| 97 | 1.9.21.5.2 | 客户端交互说明 | manual | 0.5d | 2021-04-08 | 2021-04-12 |  |  |  |  |  |  |  |  | 王川 | 4h |  | -4294922996.52 |
| 98 | 1.9.21.6 | 总体联调 | manual | 2d | 2021-04-08 A | 2021-04-09 A |  | 100% |  |  |  |  |  |  | 陈小虎; 贾志浩; 王川; 周天文 | 64h | 64h | -4294922999.27 |
| 99 | 1.9.22 | **信创终端相关开发计划** |  | 15d? | 2021-03-09 | 2021-03-29 |  | 6% | 14.16d? | 2021-04-12 |  |  |  |  |  | 312h | 16h |  |
| 100 | 1.9.22.1 | guesttools防误删及可恢复 | manual | 2d | 2021-04-12 | 2021-04-13 |  |  |  |  |  |  |  |  | 周天文 | 16h |  | -4294922995.27 |
| 101 | 1.9.22.2 | [6822]支持云端访问终端本地磁盘 | manual | 3d | 2021-04-12 | 2021-04-14 |  |  |  |  |  |  |  |  | 陈小虎 | 24h |  | -4294922994.27 |
| 102 | 1.9.22.3 | [6834]虚拟桌面操作系统单点登录 | manual | 2d | 2021-04-14 | 2021-04-15 |  |  |  |  |  |  |  |  | 周天文 | 16h |  | -4294922993.27 |
| 103 | 1.9.22.4 | 虚拟机闲置策略 | manual | 1d | 2021-04-20 | 2021-04-20 |  |  |  |  |  |  |  |  | 田怡文 | 8h |  | -4294922988.27 |
| 104 | 1.9.22.5 | [6824]支持客户端显示网络状态 | manual | 4d | 2021-04-20 | 2021-04-23 |  |  |  |  |  |  |  |  | 周天文 | 32h |  | -4294922985.27 |
| 105 | 1.9.22.6 | **支持软终端程序升级更新** |  | 1.94d | 2021-04-15 | 2021-04-16 |  |  |  |  |  |  |  | 0d |  | 40h |  |  |
| 106 | 1.9.22.6.1 | 前端开发 | manual | 1d | 2021-04-16 | 2021-04-16 |  |  |  |  |  |  |  |  | 王川 | 8h |  | -4294922992.27 |
| 107 | 1.9.22.6.2 | 联调-支持软终端程序升级更新 | manual | 2d | 2021-04-15 | 2021-04-16 |  |  |  |  |  |  |  |  | 陈小虎; 王川 | 32h |  | -4294922992.27 |
| 108 | 1.9.22.7 | [6826]桌面终端的工具栏具备任意拖动或隐藏 | manual | 3d | 2021-04-19 | 2021-04-21 |  |  |  |  |  |  |  |  | 陈小虎 | 24h |  | -4294922987.27 |

Notes:
- 85: 贾志浩 内容如下： / 需求分析： / 权限设置 / 获取已发布应用策略列表接口 / 发布、编辑云应用接口 / 删除云应用接口 / 获取云应用已安装应用模板接口（标记一下） / 通道获取列表 / 桌面接口添加应用列表 / 云应用发布模块可配置
- 86: 周天文
- 92: 王川完成
- 93: 王川完成
- 94: 王川完成
- 101: 参与人：陈小虎、王川
- 102: 参与人：魏洪、王川
- 103: 参与人：贾志浩、王川
- 104: 参与人：童春月、陈小虎
- 107: 参与人：贾志浩

| ID | WBS | Task | Type | Duration | Start | Finish | Complete | Remaining | Baseline 1 start | Baseline 1 finish | Total slack | Constraint | Resources | Work | Actual work | 延期 |
| --- | --- | --- | --- | --- | --- | --- | --- | --- | --- | --- | --- | --- | --- | --- | --- | --- |
| 109 | 1.9.22.8 | **[6825]支持多屏展示** |  | 2.94d | 2021-04-22 | 2021-04-26 |  |  |  |  | 0d |  |  | 40h |  |  |
| 110 | 1.9.22.8.1 | 前端开发 | manual | 2d | 2021-04-23 | 2021-04-26 |  |  |  |  |  | start no earlier than 2021-04-23 | 田怡文 | 16h |  | -4294922982.27 |
| 111 | 1.9.22.8.2 | 联调-[6825]支持多屏展示 | manual | 3d | 2021-04-22 | 2021-04-26 |  |  |  |  |  |  | 陈小虎 | 24h |  | -4294922982.27 |
| 112 | 1.9.22.9 | 打印机限制功能集成 | manual | 2d | 2021-04-27 | 2021-04-28 |  |  |  |  |  |  | 陈小虎 | 16h |  | -4294922980.27 |
| 113 | 1.9.22.10 | **软件程序安装限制功能** |  | 9.94d | 2021-04-14 A | 2021-04-27 | 50% | 4.97d |  |  | 0d |  |  | 32h | 16h |  |
| 114 | 1.9.22.10.1 | 前端开发 | manual | 2d | 2021-04-14 A | 2021-04-15 A | 100% |  |  |  |  |  | 王川 | 16h | 16h | -4294922993.27 |
| 115 | 1.9.22.10.2 | 联调-软件程序安装限制功能集成 | manual | 2d | 2021-04-26 | 2021-04-27 |  |  |  |  |  |  | 周天文 | 16h |  | -4294922981.27 |
| 116 | 1.9.22.11 | [6889]用户自主创建恢复快照 | manual | 1d | 2021-04-29 | 2021-04-29 |  |  |  |  |  |  | 陈小虎; 贾志浩 | 16h |  | -4294922979.27 |
| 117 | 1.9.22.12 | 总体联调 | manual | 5.69d | 2021-04-28 | 2021-05-08 |  |  |  |  |  |  | 陈小虎; 周天文 | 48h |  | -4294922970.38 |
| 119 | 1.9.23 | **待明确任务** |  | 44.5d? | 2021-03-09 A | 2021-05-13 | 4% | 42.85d? |  |  |  |  |  | 124h | 4h |  |
| 120 | 1.9.23.1 | **[6832]虚拟机在线克隆** |  | 1d? | 2021-03-09 A | 2021-03-09 | 4% | 0.96d? | 2021-02-25 | 2021-02-25 |  |  |  | 124h | 4h |  |
| 121 | 1.9.23.1.1 | [前端]虚拟机在线克隆 | manual | 0.5d | 2021-04-19 A | 2021-04-19 A | 100% |  |  |  |  |  | 黄子杰 | 4h | 4h | -11 |
| 122 | 1.9.23.1.2 | [底层] 虚拟机在线克隆 | manual | 10d | 2021-03-09 | 2021-03-22 |  |  |  |  |  |  | 羿中引 | 80h |  |  |
| 123 | 1.9.23.1.3 | 开发 虚拟机在线克隆 | manual | 1d | 2021-03-09 | 2021-03-09 |  |  |  |  |  |  | 胡海 | 8h |  |  |
| 124 | 1.9.23.1.4 | **[联调自测]虚拟机在线克隆** |  | 1d? | 2021-03-09 | 2021-03-09 |  |  |  |  |  |  |  | 32h |  |  |
| 125 | 1.9.23.1.4.1 | 功能联调 | manual | 2d | 2021-03-09 | 2021-03-10 |  |  |  |  |  |  | 胡海; 黄子杰 | 32h |  |  |
| 127 | 1.10 | 里程碑 【输出：自测包 开展自动化测试】 | milestone, manual | 0d? | 2021-04-16 | 2021-04-16 |  |  |  |  |  |  | 胡海; 贾志浩; 魏洪; 杨燕思; 章传胜; 周天文; 朱晓琨 |  |  | -4294922992.65 |
| 128 | 1.11 | 里程碑 【输出：自测包 开展自动化测试】 | milestone, manual | 0d | 2021-04-23 | 2021-04-23 |  |  |  |  |  |  | 胡海; 贾志浩; 魏洪; 杨燕思; 章传胜; 周天文; 朱晓琨 |  |  | -4294922985.65 |
| 129 | 1.12 | 里程碑 【输出：自测包 开展自动化测试】 | milestone, manual | 0d | 2021-04-28 | 2021-04-28 |  |  |  |  |  |  | 胡海; 贾志浩; 魏洪; 杨燕思; 章传胜; 周天文; 朱晓琨 |  |  | -4294922980.65 |
| 130 | 1.13 | **【X86和ARM架构融合】前端** |  | 6.94d | 2021-04-15 A | 2021-04-23 | 33% | 4.62d |  |  | 0d |  |  | 28h | 28h |  |
| 131 | 1.13.1 | [7016[资源池调整说明 | manual | 1d | 2021-04-15 A | 2021-04-15 A | 100% |  |  |  |  |  | 田怡文 | 8h | 8h | -4294922993.27 |
| 132 | 1.13.2 | [7017]分布式存储调整说明 | manual | 1d | 2021-04-17 A | 2021-04-19 A | 100% |  |  |  |  |  | 王川 | 8h | 8h | -4294922989.65 |
| 133 | 1.13.3 | [7015]主备控限制说明（错误码） | manual | 0.5d | 2021-04-17 A | 2021-04-17 A | 100% |  |  |  |  |  | 黄子杰 | 4h | 4h | -4294922991.44 |
| 134 | 1.13.4 | [7018]新增个人/公共模板调整说明 | milestone, manual | 0d | 2021-04-17 A | 2021-04-17 A | 100% |  |  |  |  |  | 黄子杰 |  |  | -4294922991.65 |
| 135 | 1.13.5 | [7019]安装包调整说明 | milestone, manual | 0d | 2021-04-19 A | 2021-04-19 A | 100% |  |  |  |  |  | 黄子杰 |  |  | -4294922989.65 |
| 136 | 1.13.6 | [7020]桌面部分调整（个人桌面、公共桌面、个人桌面池、漫游桌面） | manual | 0.5d | 2021-04-19 A | 2021-04-19 A | 100% |  |  |  |  |  | 黄子杰 | 4h | 4h | -4294922989.44 |

Notes:
- 111: 参与人：童春月、田怡文
- 112: DMS调研方案，后端要配合
- 115: DMS调研方案，后端要配合 参与人：朱盼
- 116: 参与人：贾志浩 （已经完成）
- 120: 责任人：胡海 参与人：羿中引、黄子杰 [待确认方案]
- 127: 目标：对现有已经完成的功能 开展自动化自测 / 内容：
- 128: 目标：对现有已经完成的功能 开展自动化自测...
- 129: 交付最终的可自测通过了的成果

| ID | WBS | Task | Type | Duration | Start | Finish | Remaining | Total slack | Resources | Work | Actual work | 延期 |
| --- | --- | --- | --- | --- | --- | --- | --- | --- | --- | --- | --- | --- |
| 137 | 1.13.7 | **[7021]系统桌面（错误码）** |  | 0.5d | 2021-04-19 A | 2021-04-19 | 0.5d |  | 黄子杰 | 4h | 4h | -4294922989.44 |
| 138 | 1.13.7.1 | **5.3.0融合版通用bug合并** |  | 3.94d | 2021-04-20 | 2021-04-23 |  | 0d |  |  |  |  |
| 139 | 1.13.7.1.1 | 黄子杰部分 | manual | 3d | 2021-04-20 | 2021-04-22 |  |  |  |  |  | -4294922986.27 |
| 140 | 1.13.7.1.2 | 王川部分 | manual | 2d | 2021-04-20 | 2021-04-21 |  |  |  |  |  | -4294922987.27 |
| 141 | 1.13.7.1.3 | 田怡文部分 | manual | 1d | 2021-04-23 | 2021-04-23 |  |  |  |  |  | -4294922985.27 |
| 142 | 1.14 | **分支合并：5.2.0-uos更改手动合并到5.3.0-vpc** |  | 2d | 2021-04-12 | 2021-04-13 |  |  |  | 32h |  |  |
| 143 | 1.14.1 | 黄子杰部分 | manual | 2d | 2021-04-13 | 2021-04-14 |  |  | 黄子杰 | 16h |  | -4294922994.27 |
| 144 | 1.14.2 | 王川部分 | manual | 1d | 2021-04-13 | 2021-04-13 |  |  | 王川 | 8h |  | -4294922995.27 |
| 145 | 1.14.3 | 田怡文部分 | manual | 1d | 2021-04-13 | 2021-04-13 |  |  | 田怡文 | 8h |  | -4294922995.27 |
